# crap

Schedule from MS Project, 2000-11-01 to 2003-05-13.
NIVAL Interactive

## Calendars

- Standard: Mon-Fri 08:00-12:00, 13:00-17:00; Sat-Sun off.

## Resources

| Resource | Group |
| --- | --- |
| Андрей Гулин | Programmers |
| Александр Дмитриев | Programmers |
| Антон Кругляков | Programmers |
| Александр Сабельник | Programmers |
| Дизайнеры4 | Mission disigners |
| Павел Епишин | Game designer |
| Дмитрий Захаров | Manager |
| Шевцов | Art |
| Мартыненко | Art |
| Панов? | Art |
| Чернышев | Modelers |
| Мельков | Modelers |
| Моделер2 | Modelers |
| Моделер3 | Modelers |
| Коршунов | Animators |
| Аниматор2 | Animators |
| Аниматор3 | Animators |
| Аниматор4 | Animators |
| Аниматор5 | Animators |
| Аниматор6 | Animators |
| Текстурщик1 | Texturer |
| Текстурщик2 | Texturer |
| Текстурщик3 | Texturer |
| Текстурщик4 | Texturer |
| Текстурщик5 | Texturer |
| Текстурщик6 | Texturer |
| Корабельников | Video |
| Sound engeener (Sfx) | sound |
| Озвучка | sound |
| Music | sound |
| Сценарист (Брагин) | Writers |
| Писатель | Writers |
| Технический писатель | Writers |
| Консультант | Consultant |

## Schedule

| ID | WBS | Task | Type | Duration | Start | Finish | Predecessors | Baseline start | Baseline finish | Baseline duration | Total slack | Free slack | Constraint | Resources | Work |
| --- | --- | --- | --- | --- | --- | --- | --- | --- | --- | --- | --- | --- | --- | --- | --- |
| 1 | 1 | Design Document | milestone | 0d | 2001-01-01 | 2001-01-01 |  | 2001-01-01 | 2001-01-01 | 0d | 617d |  | start no earlier than 2001-01-01 |  |  |
| 2 | 2 | Technology Demo | milestone | 0d | 2001-03-01 | 2001-03-01 |  | 2001-03-01 | 2001-03-01 | 0d | 574d |  | start no earlier than 2001-03-01 |  |  |
| 3 | 3 | Final Design Document | milestone | 0d | 2001-05-01 | 2001-05-01 |  | 2001-05-01 | 2001-05-01 | 0d | 531d |  | start no earlier than 2001-05-01 |  |  |
| 4 | 4 | Pre-Alpha 1 | milestone | 0d | 2001-07-02 | 2001-07-02 |  | 2001-07-02 | 2001-07-02 | 0d | 487d |  | start no earlier than 2001-07-02 |  |  |
| 5 | 5 | Pre-Alpha 2 | milestone | 0d | 2001-09-01 | 2001-09-01 |  | 2001-09-01 | 2001-09-01 | 0d | 442d |  | start no earlier than 2001-09-01 |  |  |
| 6 | 6 | Alpfa | milestone | 0d | 2001-11-01 | 2001-11-01 |  | 2001-11-01 | 2001-11-01 | 0d | 139d | 0d | start no earlier than 2001-11-01 |  |  |
| 7 | 7 | Marketing Materials 1 | milestone | 0d | 2002-01-01 | 2002-01-01 |  | 2002-01-01 | 2002-01-01 | 0d | 356d |  | start no earlier than 2002-01-01 |  |  |
| 8 | 8 | Marketing Materials 2 | milestone | 0d | 2002-03-01 | 2002-03-01 |  | 2002-03-01 | 2002-03-01 | 0d | 313d |  | start no earlier than 2002-03-01 |  |  |
| 9 | 9 | Beta | milestone | 0d | 2002-05-01 | 2002-05-01 |  | 2002-05-01 | 2002-05-01 | 0d | 270d |  | start no earlier than 2002-05-01 |  |  |
| 10 | 10 | Marketing Materials 3 | milestone | 0d | 2002-07-01 | 2002-07-01 |  | 2002-07-01 | 2002-07-01 | 0d | 227d |  | start no earlier than 2002-07-01 |  |  |
| 11 | 11 | Final Beta and ELK | milestone | 0d | 2002-09-01 | 2002-09-01 |  | 2002-09-01 | 2002-09-01 | 0d | 182d |  | start no earlier than 2002-09-01 |  |  |
| 12 | 12 | Master Candidate and Public Demo | milestone | 0d | 2002-11-01 | 2002-11-01 |  | 2002-11-01 | 2002-11-01 | 0d | 138d |  | start no earlier than 2002-11-01 |  |  |
| 13 | 13 | Master | milestone | 0d | 2003-01-01 | 2003-01-01 |  | 2003-01-01 | 2003-01-01 | 0d | 95d |  | start no earlier than 2003-01-01 |  |  |
| 14 | 14 | Release | milestone | 0d | 2003-03-01 | 2003-03-01 |  | 2003-03-01 | 2003-03-01 | 0d | 52d |  | start no earlier than 2003-03-01 |  |  |
| 16 | 15 | Project management |  | 132w | 2000-11-01 | 2003-05-13 |  | 2000-11-01 | 2003-05-13 | 132w | 0d |  | start no earlier than 2000-11-01 |  |  |
| 17 | 16 | Game design |  | 113w | 2001-01-01 | 2003-02-28 |  | 2001-01-01 | 2003-02-28 | 113w | 52d |  | start no earlier than 2001-01-01 | Павел Епишин | 4520h |
| 18 | 17 | Консультации |  | 32w | 2001-01-01 | 2001-08-10 |  | 2001-01-01 | 2001-08-10 | 32w | 457d |  | start no earlier than 2001-01-01 |  |  |
| 19 | 18 | **Mission design** |  | 521d | 2000-11-01 | 2002-10-30 |  | 2001-07-30 | 2001-11-02 | 70d | 139d |  |  |  | 7760h |
| 20 | 18.1 | Две пробных миссии |  | 3.5mo | 2000-11-01 | 2001-02-06 |  | 2001-07-30 | 2001-11-02 | 3.5mo | 330d | 191d |  | Дизайнеры4 | 560h |
| 21 | 18.2 | **Компании** |  | 260d | 2001-11-01 | 2002-10-30 | 6 |  |  |  | 139d |  |  |  | 6880h |
| 22 | 18.2.1 | Russian |  | 6w | 2001-11-01 | 2001-12-12 | 20 |  |  |  | 139d | 0d |  | Дизайнеры4 [400%] | 960h |
| 23 | 18.2.2 | German |  | 6w | 2001-12-13 | 2002-01-23 | 22 |  |  |  | 139d | 0d |  | Дизайнеры4 [400%] | 960h |
| 24 | 18.2.3 | Allies |  | 6w | 2002-01-24 | 2002-03-06 | 23 |  |  |  | 139d | 0d |  | Дизайнеры4 [400%] | 960h |
| 25 | 18.2.4 | US |  | 6w | 2002-03-07 | 2002-04-17 | 24 |  |  |  | 139d | 0d |  | Дизайнеры4 [400%] | 960h |
| 26 | 18.2.5 | Исправления после тестирования |  | 7mo | 2002-04-18 | 2002-10-30 | 25 |  |  |  | 139d |  |  | Дизайнеры4 | 1120h |
| 27 | 18.2.6 | Ролики на движке |  | 6mo | 2002-04-18 | 2002-10-02 | 25 |  |  |  | 139d | 0d |  | Дизайнеры4 [200%] | 1920h |
| 28 | 18.3 | Multiplayer missions |  | 4w | 2002-10-03 | 2002-10-30 | 27 |  |  |  | 139d |  |  | Дизайнеры4 [200%] | 320h |

Notes:
- 1: Design Document in MS Word format. / Note: ~ 100 страничный Дизайн Документ: общее описание проекта без детальной оценки.
- 2: Non-playable version with technology proofs of Design Document. / Note: Проверка «тонких» мест: программирование, графика, элементы gameplay. / Внесение необходимых изменений и дополнений в Дизайн Документ.
- 3: Final Design Document in MS Word format, changed in accordance with technology proofs results. / Playable prototype of game.
- 4: Non-playable version with technology and artwork proofs. / Note: собраны воедино все текущие наработки, текущая версия должна давать первое представление об игре в целом.
- 5: Playable version with major functionality. Major artworks should be ready. / Note: должна быть реализована основная функциональность, AI и gameplay в не полном но значительном объеме.
- 6: Playable version with one single-player mission ready with final implementation of design, engine, artwork, interface, gameplay and basics of multiplayer mode. / Note: Версию можно показывать, playtest-ить, анализировать результаты. Уточнение объема и сроков по задачам. Должен быть готов весь Concept art.
- 7: 1.Nival company logo, wording for Nival copyright text supplied / 2. Company profile / Supply a brief company profile for Nival that would be suitable for using in a news item or supplying to the press. / 3.Images of game characters / Images to be supplied as 1024x768 Targa files with alpha channel. English character and objects names should be used for the filenames so each file can be identified. 20 images of characters. 40 images of weapons and equipment. / 4.Screenshots / At least 50 screen shots. A range of screen shots showing various sections of the game. To be supplied at 1024x768 resolution in Jpeg format in low compression (Best quality). / 5.Game description / 3-5 pages description in English. Brief overview/marketing pitch for the game, consisting of roughly 15 lines of text. / 6.Brief character, weapons and equipment descriptions / For each character, weapons and equipment 50-60 words to accompany images. / Note: Тексты для сайтов, возможно первые трэйлеры.
- 8: 1.Game logo in Targa format / 2.Posters / 3-4 high quality poster stills in either portrait or landscape versions. Rendered at 300 pixels per inch at A4 size. To be supplied in Photoshop PSD format. / 3.Artworks, music and sound effects for game website production. / Note:
- 9: 1.Playable version with full set of unbalanced missions for single and multiplayer games with final implementation of design, engine, artwork, interface and gameplay. The game may have bugs, but it should be possible to pass though the whole the game. / 2.Bug Database / Setup and maintain bug database. Database to be accessed by Publisher via the Internet. Standard form for reporting bugs. / Note: ВСЕ есть, но не сбалансировано и возможны баги.
- 10: 1.Intro FMV and other ready FMVs / To be supplied in the following formats: AVI format with sound, Mpeg format with sound, Master frames supplied in Targa format. / 2.Trailer / To be supplied in the following formats: AVI format with sound, Mpeg format with sound, Master frames supplied in Targa format. / Note:
- 11: 1. Beta with full set balanced missions. All English texts to be in place but not style corrected. / 2.Walk through and hints for each mission and cheat codes to be supplied to allow for rapid testing. / 3.Localization Kit to be supplied allowing Publisher to integrate new text and voices. / 4.Final character descriptions in English, final Russian texts and voices should be available as samples for localization. / 5.Final English Game Manual in MS Word format / Note:
- 12: 1.Final Beta with all final style corrected English and German text and voice integrated and all Class A bugs removed, fine tuned. Bug classes are defined as: Class A bugs are those bugs that cause a fatal error in the Program, causing it to either crash or malfunction to such an extent that it is impossible to recover and continue as normal. If a Class A bug is discovered but cannot be reproduced it may be reclassified as a Class B bug. The Developer must remove all Class A bugs from the Program. Class B bugs are those bugs that cause the Program to malfunction but not in a fatal way. A Class B bug also describes general errors in the Programs gameplay and user interface that distract from the commercial quality of the Program. Spelling mistakes are Class B bugs. If a Class B bug occurs rarely, it may at the desecration the Publisher be reclassified as a Class C bug. It is strongly recommended that Class B bugs are fixed before released. Class C bugs describes not serious issues such as minor gameplay problems, improvements to the user interface. If time allows, Class C bugs should be addressed, but only after all Class A, Class B bugs have been removed. A Program may be released containing Class C bugs. / 2.Playable public demo version with 2 missions, and self-running feature for cover mount disks of magazines (English and German). / Note:
- 13: 1.Master Candidate with all Class A and all known Class B bugs (except for those specifically agreed upon by Publisher and Developer) removed. / 2.Game-play hints and tips to complete the whole game to be supplied in English in MS Word format. / Note:
- 14: Ура!!!
- 21: Одна миссия делается за неделю / В каждой кампании 6 сценарных миссий + Темплейтов объёмом работы эквивалентным 18 миссиям = 24 недель на компанию. / Это максимальный темп.
- 28: Так как в наш multiplayer будет играть не так мого людей, то можно ограничеться шаблонами на 8 миссий. Для сравнения в Fallout Tactics их всего 4.

| ID | WBS | Task | Duration | Start | Finish | Predecessors | Baseline start | Baseline finish | Baseline duration | Total slack | Free slack | Constraint | Resources | Work |
| --- | --- | --- | --- | --- | --- | --- | --- | --- | --- | --- | --- | --- | --- | --- |
| 30 | 19 | **Programming** | 223d? | 2000-11-01 | 2001-09-07 |  | 2000-11-01 | 2001-04-24 | 125d | 437d |  |  |  | 5560h |
| 31 | 19.1 | startMonster | 49d? | 2000-11-01 | 2001-01-08 |  |  |  |  | 481d | 0d | finish no earlier than 2001-01-08 |  |  |
| 32 | 19.2 | startAndy | 49d? | 2000-11-01 | 2001-01-08 |  |  |  |  | 446d | 0d | start no earlier than 2000-11-01 |  |  |
| 33 | 19.3 | startBandures | 104d? | 2000-11-01 | 2001-03-26 |  |  |  |  | 466d | 0d | start no earlier than 2000-11-01 |  |  |
| 34 | 19.4 | startAlex | 23d? | 2000-11-01 | 2000-12-01 |  |  |  |  | 437d | 0d | start no earlier than 2000-11-01 |  |  |
| 35 | 19.5 | Maya exporter | 4w | 2001-01-09 | 2001-02-05 | 31 |  |  |  | 481d | 0d |  | Александр Дмитриев | 160h |
| 36 | 19.6 | **Animation system** | 90d | 2001-02-06 | 2001-06-11 |  | 2000-11-01 | 2001-04-24 | 25w | 481d |  |  | Александр Дмитриев | 1400h |
| 37 | 19.6.1 | walking units | 7w | 2001-03-20 | 2001-05-07 | 51 |  |  |  | 481d | 0d |  | Александр Дмитриев | 280h |
| 38 | 19.6.2 | shooting | 2w | 2001-05-08 | 2001-05-21 | 37 |  |  |  | 481d | 0d |  | Александр Дмитриев | 80h |
| 39 | 19.6.3 | general | 5w | 2001-02-06 | 2001-03-12 | 35 |  |  |  | 481d | 0d |  | Александр Дмитриев | 200h |
| 40 | 19.6.4 | physical model | 3w | 2001-05-22 | 2001-06-11 | 38 |  |  |  | 481d | 0d |  | Александр Дмитриев | 120h |
| 41 | 19.7 | Design Document | 1w | 2001-04-17 | 2001-04-23 | 49 |  |  |  | 446d | 0d |  | Андрей Гулин | 40h |
| 42 | 19.8 | **AI** | 110d | 2001-03-13 | 2001-08-13 |  |  |  |  | 446d |  |  |  | 760h |
| 43 | 19.8.1 | pathfinding | 4w | 2001-04-24 | 2001-05-21 | 41 |  |  |  | 446d | 0d |  | Андрей Гулин | 160h |
| 44 | 19.8.2 | general | 4w | 2001-05-22 | 2001-06-18 | 43 |  |  |  | 446d | 0d |  | Андрей Гулин | 160h |
| 45 | 19.8.3 | structure | 3w | 2001-03-13 | 2001-04-02 | 65 |  |  |  | 446d | 0d |  | Андрей Гулин | 120h |
| 46 | 19.8.4 | covers calcs | 4w | 2001-06-19 | 2001-07-16 | 44 |  |  |  | 446d | 0d |  | Андрей Гулин | 160h |
| 47 | 19.8.5 | advanced cooperation | 4w | 2001-07-17 | 2001-08-13 | 46 |  |  |  | 446d | 0d |  | Андрей Гулин | 160h |
| 48 | 19.8.6 | destructions | 2w | 2001-07-16 | 2001-07-27 | 70 |  |  |  | 437d | 0d |  |  |  |
| 49 | 19.9 | Discussions | 2w | 2001-04-03 | 2001-04-16 | 45 |  |  |  | 446d | 0d |  | Андрей Гулин | 80h |
| 50 | 19.10 | **Interface** | 65d | 2001-03-13 | 2001-06-11 |  |  |  |  | 466d |  |  |  | 440h |
| 51 | 19.10.1 | General | 1w | 2001-03-13 | 2001-03-19 | 39 |  |  |  | 481d | 0d |  | Александр Дмитриев | 40h |
| 52 | 19.10.2 | General structure | 4w | 2001-04-03 | 2001-04-30 | 59 |  |  |  | 466d | 0d |  | Антон Кругляков | 160h |
| 53 | 19.10.3 | Mission | 5w | 2001-05-01 | 2001-06-04 | 52 |  |  |  | 466d | 0d |  | Антон Кругляков | 200h |
| 54 | 19.10.4 | Base | 1w | 2001-06-05 | 2001-06-11 | 53 |  |  |  | 466d | 0d |  | Антон Кругляков | 40h |

| ID | WBS | Task | Duration | Start | Finish | Predecessors | Baseline start | Baseline finish | Baseline duration | Total slack | Free slack | Resources | Work |
| --- | --- | --- | --- | --- | --- | --- | --- | --- | --- | --- | --- | --- | --- |
| 55 | 19.11 | **Graphics** | 200d | 2000-12-04 | 2001-09-07 |  |  |  |  | 437d |  |  | 1080h |
| 56 | 19.11.1 | VIPM | 1w | 2000-12-04 | 2000-12-08 | 34 |  |  |  | 437d | 0d | Александр Сабельник | 40h |
| 57 | 19.11.2 | Terrain Texture | 3w | 2000-12-11 | 2000-12-29 | 56 |  |  |  | 437d | 0d | Александр Сабельник | 120h |
| 58 | 19.11.3 | Buildings | 4w | 2001-03-26 | 2001-04-20 | 67 |  |  |  | 437d | 0d | Александр Сабельник | 160h |
| 59 | 19.11.4 | Text formatting | 1w | 2001-03-27 | 2001-04-02 | 33 |  |  |  | 466d | 0d | Антон Кругляков | 40h |
| 60 | 19.11.5 | Terrain | 4w | 2001-08-13 | 2001-09-07 | 74 |  |  |  | 437d |  | Александр Сабельник | 160h |
| 61 | 19.11.6 | Water | 2w | 2001-06-26 | 2001-07-09 | 64 |  |  |  | 481d |  | Александр Дмитриев | 80h |
| 62 | 19.11.7 | Lighting | 2w | 2001-08-14 | 2001-08-27 | 47 |  |  |  | 446d |  | Андрей Гулин | 80h |
| 63 | 19.11.8 | Particles | 4w | 2001-07-03 | 2001-07-30 | 73 |  |  |  | 466d |  | Антон Кругляков | 160h |
| 64 | 19.11.9 | Destructions | 2w | 2001-06-12 | 2001-06-25 | 40 |  |  |  | 481d | 0d | Александр Дмитриев | 80h |
| 65 | 19.11.10 | General | 4w | 2001-02-13 | 2001-03-12 | 75 |  |  |  | 446d | 0d | Андрей Гулин | 160h |
| 66 | 19.12 | **MapEditor** | 183d | 2000-11-01 | 2001-07-13 |  | 2000-11-01 | 2000-11-07 | 5d | 477d |  |  | 1200h |
| 67 | 19.12.1 | Template editor | 12w | 2001-01-01 | 2001-03-23 | 57 | 2000-11-01 | 2000-11-07 | 5d | 437d | 0d | Александр Сабельник | 480h |
| 68 | 19.12.2 | Terrain info | 4w | 2001-04-23 | 2001-05-18 | 58 |  |  |  | 437d | 0d | Александр Сабельник | 160h |
| 69 | 19.12.3 | UI improve | 6w | 2001-05-21 | 2001-06-29 | 68 |  |  |  | 437d | 0d | Александр Сабельник | 240h |
| 70 | 19.12.4 | Units | 2w | 2001-07-02 | 2001-07-13 | 69 |  |  |  | 437d | 0d | Александр Сабельник | 80h |
| 71 | 19.12.5 | Script scenes tracks | 6w | 2000-11-01 | 2000-12-12 |  |  |  |  | 630d |  | Александр Сабельник | 240h |
| 72 | 19.13 | **Misc** | 154d | 2001-01-09 | 2001-08-10 |  |  |  |  | 437d |  |  | 400h |
| 73 | 19.13.1 | acks | 3w | 2001-06-12 | 2001-07-02 | 54 |  |  |  | 466d | 0d | Антон Кругляков | 120h |
| 74 | 19.13.2 | destructions | 2w | 2001-07-30 | 2001-08-10 | 48 |  |  |  | 437d | 0d | Александр Сабельник | 80h |
| 75 | 19.13.3 | general app structure | 5w | 2001-01-09 | 2001-02-12 | 32 |  |  |  | 446d | 0d | Андрей Гулин | 200h |
| 76 | 20 | **Art** | 104d? | 2000-11-01 | 2001-03-26 |  | 2000-11-01 | 2000-11-08 | 6d? | 556d |  |  |  |
| 77 | 20.1 | **Characters** | 1d? | 2000-11-01 | 2000-11-01 |  | 2000-11-01 | 2000-11-01 | 1d? | 659d |  |  |  |
| 78 | 20.1.1 | Research | 1d? | 2000-11-01 | 2000-11-01 |  | 2000-11-01 | 2000-11-01 | 1d? | 659d |  |  |  |
| 79 | 20.1.2 | Concept | 1d? | 2000-11-01 | 2000-11-01 |  | 2000-11-01 | 2000-11-01 | 1d? | 659d |  |  |  |
| 80 | 20.1.3 | Modeling | 1d? | 2000-11-01 | 2000-11-01 |  | 2000-11-01 | 2000-11-01 | 1d? | 659d |  |  |  |
| 81 | 20.1.4 | Texturing | 1d | 2000-11-01 | 2000-11-01 |  | 2000-11-01 | 2000-11-01 | 1d | 659d |  |  |  |
| 82 | 20.1.5 | Animation | 1d? | 2000-11-01 | 2000-11-01 |  | 2000-11-01 | 2000-11-01 | 1d? | 659d |  |  |  |
| 83 | 20.1.6 | Build | 1d? | 2000-11-01 | 2000-11-01 |  | 2000-11-01 | 2000-11-01 | 1d? | 659d |  |  |  |

| ID | WBS | Task | Duration | Start | Finish | Predecessors | Baseline start | Baseline finish | Baseline duration | Total slack |
| --- | --- | --- | --- | --- | --- | --- | --- | --- | --- | --- |
| 84 | 20.2 | **Buildings** | 104d? | 2000-11-01 | 2001-03-26 |  | 2000-11-01 | 2000-11-08 | 6d? | 556d |
| 85 | 20.2.1 | Research | 1d? | 2000-11-01 | 2000-11-01 |  | 2000-11-01 | 2000-11-01 | 1d? | 659d |
| 86 | 20.2.2 | Concept | 1d? | 2000-11-01 | 2000-11-01 |  | 2000-11-01 | 2000-11-01 | 1d? | 659d |
| 87 | 20.2.3 | Modeling | 1d? | 2000-11-01 | 2000-11-01 |  | 2000-11-01 | 2000-11-01 | 1d? | 659d |
| 88 | 20.2.4 | Texturing | 1d? | 2000-11-01 | 2000-11-01 |  | 2000-11-01 | 2000-11-01 | 1d? | 659d |
| 89 | 20.2.5 | Animation | 1d? | 2000-11-01 | 2000-11-01 |  | 2000-11-01 | 2000-11-01 | 1d? | 659d |
| 90 | 20.2.6 | Build | 1d? | 2000-11-01 | 2000-11-01 |  | 2000-11-01 | 2000-11-01 | 1d? | 659d |
| 91 | 20.2.7 | Templates | 1d? | 2001-03-26 | 2001-03-26 | 67 | 2000-11-08 | 2000-11-08 | 1d? | 556d |
| 92 | 20.3 | **Terrain** | 1d? | 2000-11-01 | 2000-11-01 |  | 2000-11-01 | 2000-11-01 | 1d? | 659d |
| 93 | 20.3.1 | Research | 1d? | 2000-11-01 | 2000-11-01 |  | 2000-11-01 | 2000-11-01 | 1d? | 659d |
| 94 | 20.3.2 | Texturing | 1d? | 2000-11-01 | 2000-11-01 |  | 2000-11-01 | 2000-11-01 | 1d? | 659d |
| 95 | 20.4 | **Effects** | 1d? | 2000-11-01 | 2000-11-01 |  | 2000-11-01 | 2000-11-01 | 1d? | 659d |
| 96 | 20.4.1 | Research | 1d? | 2000-11-01 | 2000-11-01 |  | 2000-11-01 | 2000-11-01 | 1d? | 659d |
| 97 | 20.5 | **Interface** | 1d? | 2000-11-01 | 2000-11-01 |  | 2000-11-01 | 2000-11-01 | 1d? | 659d |
| 98 | 20.5.1 | Concept | 1d? | 2000-11-01 | 2000-11-01 |  | 2000-11-01 | 2000-11-01 | 1d? | 659d |
| 99 | 20.5.2 | **Bases** | 1d? | 2000-11-01 | 2000-11-01 |  | 2000-11-01 | 2000-11-01 | 1d? | 659d |
| 100 | 20.5.2.1 | Research | 1d? | 2000-11-01 | 2000-11-01 |  | 2000-11-01 | 2000-11-01 | 1d? | 659d |
| 101 | 20.5.2.2 | **Russian** | 1d? | 2000-11-01 | 2000-11-01 |  | 2000-11-01 | 2000-11-01 | 1d? | 659d |
| 102 | 20.5.2.2.1 | Concept | 1d? | 2000-11-01 | 2000-11-01 |  | 2000-11-01 | 2000-11-01 | 1d? | 659d |
| 103 | 20.5.2.3 | **German** | 1d? | 2000-11-01 | 2000-11-01 |  | 2000-11-01 | 2000-11-01 | 1d? | 659d |
| 104 | 20.5.2.3.1 | Concept | 1d? | 2000-11-01 | 2000-11-01 |  | 2000-11-01 | 2000-11-01 | 1d? | 659d |
| 105 | 20.5.2.4 | **Allies** | 1d? | 2000-11-01 | 2000-11-01 |  | 2000-11-01 | 2000-11-01 | 1d? | 659d |
| 106 | 20.5.2.4.1 | Concept | 1d? | 2000-11-01 | 2000-11-01 |  | 2000-11-01 | 2000-11-01 | 1d? | 659d |
| 107 | 20.5.2.5 | **US** | 1d? | 2000-11-01 | 2000-11-01 |  | 2000-11-01 | 2000-11-01 | 1d? | 659d |
| 108 | 20.5.2.5.1 | Concept | 1d? | 2000-11-01 | 2000-11-01 |  | 2000-11-01 | 2000-11-01 | 1d? | 659d |

| ID | WBS | Task | Duration | Start | Finish | Baseline start | Baseline finish | Baseline duration | Total slack | Free slack |
| --- | --- | --- | --- | --- | --- | --- | --- | --- | --- | --- |
| 109 | 20.6 | **Movies** | 1d? | 2000-11-01 | 2000-11-01 | 2000-11-01 | 2000-11-01 | 1d? | 658d | 0d |
| 110 | 20.6.1 | GameIntro | 1d | 2000-11-01 | 2000-11-01 | 2000-11-01 | 2000-11-01 | 1d | 658d |  |
| 111 | 20.6.2 | **Russian** | 1d? | 2000-11-01 | 2000-11-01 | 2000-11-01 | 2000-11-01 | 1d? | 658d |  |
| 112 | 20.6.2.1 | CampainIntro | 1d? | 2000-11-01 | 2000-11-01 | 2000-11-01 | 2000-11-01 | 1d? | 658d |  |
| 113 | 20.6.2.2 | CampaignOuttro | 1d? | 2000-11-01 | 2000-11-01 | 2000-11-01 | 2000-11-01 | 1d? | 658d |  |
| 114 | 20.6.2.3 | **Intermissions** | 1d? | 2000-11-01 | 2000-11-01 | 2000-11-01 | 2000-11-01 | 1d? | 658d |  |
| 115 | 20.6.2.3.1 | Chapter1 | 1d? | 2000-11-01 | 2000-11-01 | 2000-11-01 | 2000-11-01 | 1d? | 658d |  |
| 116 | 20.6.2.3.2 | Chapter2 | 1d? | 2000-11-01 | 2000-11-01 | 2000-11-01 | 2000-11-01 | 1d? | 658d |  |
| 117 | 20.6.2.3.3 | Chapter3 | 1d? | 2000-11-01 | 2000-11-01 | 2000-11-01 | 2000-11-01 | 1d? | 658d |  |
| 118 | 20.6.2.3.4 | Chapter4 | 1d? | 2000-11-01 | 2000-11-01 | 2000-11-01 | 2000-11-01 | 1d? | 658d |  |
| 119 | 20.6.2.3.5 | Chapter5 | 1d? | 2000-11-01 | 2000-11-01 | 2000-11-01 | 2000-11-01 | 1d? | 658d |  |
| 120 | 20.6.3 | **German** | 1d? | 2000-11-01 | 2000-11-01 | 2000-11-01 | 2000-11-01 | 1d? | 658d |  |
| 121 | 20.6.3.1 | CampainIntro | 1d? | 2000-11-01 | 2000-11-01 | 2000-11-01 | 2000-11-01 | 1d? | 658d |  |
| 122 | 20.6.3.2 | CampaignOuttro | 1d? | 2000-11-01 | 2000-11-01 | 2000-11-01 | 2000-11-01 | 1d? | 658d |  |
| 123 | 20.6.3.3 | **Intermissions** | 1d? | 2000-11-01 | 2000-11-01 | 2000-11-01 | 2000-11-01 | 1d? | 658d |  |
| 124 | 20.6.3.3.1 | Chapter1 | 1d? | 2000-11-01 | 2000-11-01 | 2000-11-01 | 2000-11-01 | 1d? | 658d |  |
| 125 | 20.6.3.3.2 | Chapter2 | 1d? | 2000-11-01 | 2000-11-01 | 2000-11-01 | 2000-11-01 | 1d? | 658d |  |
| 126 | 20.6.3.3.3 | Chapter3 | 1d? | 2000-11-01 | 2000-11-01 | 2000-11-01 | 2000-11-01 | 1d? | 658d |  |
| 127 | 20.6.3.3.4 | Chapter4 | 1d? | 2000-11-01 | 2000-11-01 | 2000-11-01 | 2000-11-01 | 1d? | 658d |  |
| 128 | 20.6.3.3.5 | Chapter5 | 1d? | 2000-11-01 | 2000-11-01 | 2000-11-01 | 2000-11-01 | 1d? | 658d |  |
| 129 | 20.6.3.3.6 | Chapter6 | 1d? | 2000-11-01 | 2000-11-01 | 2000-11-01 | 2000-11-01 | 1d? | 658d |  |
| 130 | 20.6.4 | **Allies** | 1d? | 2000-11-01 | 2000-11-01 | 2000-11-01 | 2000-11-01 | 1d? | 658d |  |
| 131 | 20.6.4.1 | CampainIntro | 1d? | 2000-11-01 | 2000-11-01 | 2000-11-01 | 2000-11-01 | 1d? | 658d |  |
| 132 | 20.6.4.2 | CampaignOuttro | 1d? | 2000-11-01 | 2000-11-01 | 2000-11-01 | 2000-11-01 | 1d? | 658d |  |

| ID | WBS | Task | Duration | Start | Finish | Predecessors | Baseline start | Baseline finish | Baseline duration | Total slack |
| --- | --- | --- | --- | --- | --- | --- | --- | --- | --- | --- |
| 133 | 20.6.4.3 | **Intermissions** | 1d? | 2000-11-01 | 2000-11-01 |  | 2000-11-01 | 2000-11-01 | 1d? | 658d |
| 134 | 20.6.4.3.1 | Chapter1 | 1d? | 2000-11-01 | 2000-11-01 |  | 2000-11-01 | 2000-11-01 | 1d? | 658d |
| 135 | 20.6.4.3.2 | Chapter2 | 1d? | 2000-11-01 | 2000-11-01 |  | 2000-11-01 | 2000-11-01 | 1d? | 658d |
| 136 | 20.6.4.3.3 | Chapter3 | 1d? | 2000-11-01 | 2000-11-01 |  | 2000-11-01 | 2000-11-01 | 1d? | 658d |
| 137 | 20.6.4.3.4 | Chapter4 | 1d? | 2000-11-01 | 2000-11-01 |  | 2000-11-01 | 2000-11-01 | 1d? | 658d |
| 138 | 20.6.4.3.5 | Chapter5 | 1d? | 2000-11-01 | 2000-11-01 |  | 2000-11-01 | 2000-11-01 | 1d? | 658d |
| 139 | 20.6.5 | **US** | 1d? | 2000-11-01 | 2000-11-01 |  | 2000-11-01 | 2000-11-01 | 1d? | 658d |
| 140 | 20.6.5.1 | CampainIntro | 1d? | 2000-11-01 | 2000-11-01 |  | 2000-11-01 | 2000-11-01 | 1d? | 658d |
| 141 | 20.6.5.2 | CampaignOuttro | 1d? | 2000-11-01 | 2000-11-01 |  | 2000-11-01 | 2000-11-01 | 1d? | 658d |
| 142 | 20.6.5.3 | **Intermissions** | 1d? | 2000-11-01 | 2000-11-01 |  | 2000-11-01 | 2000-11-01 | 1d? | 658d |
| 143 | 20.6.5.3.1 | Chapter1 | 1d? | 2000-11-01 | 2000-11-01 |  | 2000-11-01 | 2000-11-01 | 1d? | 658d |
| 144 | 20.6.5.3.2 | Chapter2 | 1d? | 2000-11-01 | 2000-11-01 |  | 2000-11-01 | 2000-11-01 | 1d? | 658d |
| 145 | 20.6.5.3.3 | Chapter3 | 1d? | 2000-11-01 | 2000-11-01 |  | 2000-11-01 | 2000-11-01 | 1d? | 658d |
| 146 | 20.6.5.3.4 | Chapter4 | 1d? | 2000-11-01 | 2000-11-01 |  | 2000-11-01 | 2000-11-01 | 1d? | 658d |
| 147 | 20.6.5.3.5 | Chapter5 | 1d? | 2000-11-01 | 2000-11-01 |  | 2000-11-01 | 2000-11-01 | 1d? | 658d |
| 148 | 20.6.5.3.6 | Chapter6 | 1d? | 2000-11-01 | 2000-11-01 |  | 2000-11-01 | 2000-11-01 | 1d? | 658d |
| 149 | 20.7 | **Marketing** | 1d? | 2000-11-02 | 2000-11-02 | 109 | 2000-11-02 | 2000-11-02 | 1d? | 658d |
| 150 | 20.7.1 | Posters | 1d? | 2000-11-02 | 2000-11-02 |  | 2000-11-02 | 2000-11-02 | 1d? | 658d |
| 151 | 20.7.2 | Box | 1d? | 2000-11-02 | 2000-11-02 |  | 2000-11-02 | 2000-11-02 | 1d? | 658d |
| 152 | 20.7.3 | PromoReels | 1d? | 2000-11-02 | 2000-11-02 |  | 2000-11-02 | 2000-11-02 | 1d? | 658d |
| 153 | 20.7.4 | ForSite | 1d? | 2000-11-02 | 2000-11-02 |  | 2000-11-02 | 2000-11-02 | 1d? | 658d |
| 154 | 20.7.5 | Stuff | 1d? | 2000-11-02 | 2000-11-02 |  | 2000-11-02 | 2000-11-02 | 1d? | 658d |
| 155 | 21 | Сценарий | 4d | 2000-11-01 | 2000-11-06 |  | 2000-11-01 | 2000-11-06 | 4d | 656d |
| 156 | 22 | Звук | 5d | 2000-11-01 | 2000-11-07 |  | 2000-11-01 | 2000-11-07 | 5d | 655d |
